# Belmet · ERP 2026

Schedule from GanttProject, 2026-06-01 to 2027-09-09.
Armonie Group
GANTT projet Belmet ERP 2026 · NOTOS / PHL Soft · aligné sur le GANTT interactif

## Calendars

- Project calendar: Mon-Sun working.

## Resources

| Resource |
| --- |
| Nicolas Durand |
| Lionel Kieffer |
| Léo Charrier |
| Équipe développement |
| Frédéric Dantz |
| Thomas Pruvost |
| Équipe métiers |
| Client |

## Schedule

| ID | WBS | Task | Type | Duration | Start | Finish | Complete | Resources |
| --- | --- | --- | --- | --- | --- | --- | --- | --- |
| 1 | 1 | **PHASE 0 · Réalisé** |  | 27d | 2026-06-01 | 2026-06-27 | 100% |  |
| 2 | 1.1 | Recette en bac à sable (avant migration) · Léo Charrier |  | 27d | 2026-06-01 | 2026-06-27 | 100% | Léo Charrier |
| 3 | 1.2 | Migration V6R1 → V7R5 en production · Lionel · 22/11/2025 |  | 27d | 2026-06-01 | 2026-06-27 | 100% | Lionel Kieffer |
| 4 | 1.3 | Travaux post-migration · jusqu'à déc. 2025 |  | 27d | 2026-06-01 | 2026-06-27 | 100% | Lionel Kieffer |
| 5 | 1.4 | Cahier des charges v1 · reçu |  | 27d | 2026-06-01 | 2026-06-27 | 100% | Client |
| 6 | 1.5 | MVP de la solution cible · N. Durand · validé par le DSI |  | 27d | 2026-06-01 | 2026-06-27 | 100% | Nicolas Durand |
| 7 | 2 | **PHASE 1 · Cadrage & conception** |  | 147d | 2026-07-01 | 2026-11-24 |  |  |
| 8 | 2.1 | Cahier des charges définitif |  | 43d | 2026-07-01 | 2026-08-12 |  | Client; Équipe métiers |
| 9 | 2.2 | Structuration de l'équipe de développement · N. Durand |  | 50d | 2026-07-01 | 2026-08-19 |  | Nicolas Durand |
| 10 | 2.3 | Diagramme de flux informatiques / métiers |  | 52d | 2026-07-17 | 2026-09-06 |  | Frédéric Dantz; Équipe métiers |
| 11 | 2.4 | Mise en place des espaces de travail de l’équipe · Thomas Pruvost |  | 58d | 2026-07-17 | 2026-09-12 |  | Thomas Pruvost |
| 12 | 2.5 | CC définitif (bloquant) | milestone | 0d | 2026-08-13 | 2026-08-13 |  |  |
| 13 | 2.6 | Description globale des process |  | 55d | 2026-08-26 | 2026-10-19 |  | Frédéric Dantz; Équipe métiers |
| 14 | 2.7 | Construction du modèle de données |  | 49d | 2026-10-07 | 2026-11-24 |  | Équipe développement |
| 15 | 3 | **PHASE 2 · Maquette & validation client** |  | 83d | 2026-10-26 | 2027-01-16 |  |  |
| 16 | 3.1 | Back · API domaines prioritaires (référentiels, achat, vente) |  | 48d | 2026-10-26 | 2026-12-12 |  | Équipe développement |
| 17 | 3.2 | Front · petites maquettes par domaine |  | 52d | 2026-11-07 | 2026-12-28 |  | Équipe développement |
| 18 | 3.3 | Maquettes · fin décembre | milestone | 0d | 2026-12-29 | 2026-12-29 |  |  |
| 19 | 3.4 | Validation client des maquettes · alignement |  | 19d | 2026-12-29 | 2027-01-16 |  | Client |
| 20 | 3.5 | Validation client · janvier | milestone | 0d | 2027-01-13 | 2027-01-13 |  |  |
| 21 | 4 | **PHASE 3 · Développement & recette (par lots)** |  | 177d | 2027-01-17 | 2027-07-12 |  |  |
| 22 | 4.1 | Lot 1 · Socle & référentiels · développement |  | 59d | 2027-01-17 | 2027-03-16 |  | Équipe développement |
| 23 | 4.2 | Lot 1 · Socle · recette + correctifs |  | 27d | 2027-03-17 | 2027-04-12 |  | Équipe développement; Équipe métiers |
| 24 | 4.3 | Lot 2 · Achats & stock · développement |  | 61d | 2027-03-20 | 2027-05-19 |  | Équipe développement |
| 25 | 4.4 | Lot 3 · Vente & commerce · développement |  | 61d | 2027-03-20 | 2027-05-19 |  | Équipe développement |
| 26 | 4.5 | Lot 4 · Qualité · développement |  | 33d | 2027-05-17 | 2027-06-18 |  | Équipe développement |
| 27 | 4.6 | Lot 5 · Interfaces · développement |  | 33d | 2027-05-17 | 2027-06-18 |  | Équipe développement |
| 28 | 4.7 | Lot 2 · Achats & stock · recette + correctifs |  | 27d | 2027-05-20 | 2027-06-15 |  | Équipe développement; Équipe métiers |
| 29 | 4.8 | Lot 3 · Vente & commerce · recette + correctifs |  | 27d | 2027-05-20 | 2027-06-15 |  | Équipe développement; Équipe métiers |
| 30 | 4.9 | Lot 4 · Qualité · recette + correctifs |  | 24d | 2027-06-19 | 2027-07-12 |  | Équipe développement; Équipe métiers |
| 31 | 4.10 | Lot 5 · Interfaces · recette + correctifs |  | 24d | 2027-06-19 | 2027-07-12 |  | Équipe développement; Équipe métiers |

| ID | WBS | Task | Type | Duration | Start | Finish | Resources |
| --- | --- | --- | --- | --- | --- | --- | --- |
| 32 | 5 | **PHASE 4 · Mise en service** |  | 116d | 2027-05-17 | 2027-09-09 |  |
| 33 | 5.1 | Objectif direction · mi-mai 2027 (cible) | milestone | 0d | 2027-05-17 | 2027-05-17 |  |
| 34 | 5.2 | Reprise des données métier · équipe + client |  | 36d | 2027-06-01 | 2027-07-06 | Équipe métiers; Client |
| 35 | 5.3 | Formation & conduite du changement · métiers |  | 34d | 2027-06-25 | 2027-07-28 | Équipe métiers |
| 36 | 5.4 | Test de charge · 100 utilisateurs, 5h-20h, page < 2 s |  | 34d | 2027-07-07 | 2027-08-09 | Équipe développement |
| 37 | 5.5 | Correctifs & stabilisation avant bascule |  | 31d | 2027-07-13 | 2027-08-12 | Équipe développement |
| 38 | 5.6 | Tests de sécurité · SSO AD/Entra, RBAC, RGPD, journalisation |  | 21d | 2027-07-23 | 2027-08-12 | Équipe développement |
| 39 | 5.7 | Charge & sécurité validées (bloquant) | milestone | 0d | 2027-08-13 | 2027-08-13 |  |
| 40 | 5.8 | Mise en production (go-live) · équipe + client |  | 21d | 2027-08-20 | 2027-09-09 | Équipe développement; Client |
| 41 | 5.9 | Mise en service · été 2027 | milestone | 0d | 2027-09-01 | 2027-09-01 |  |
