# Belmet · ERP 2026 · GANTT

Schedule from MS Project XML, 2026-06-01 to 2027-09-10.

## Calendars

- Standard: Mon-Fri 08:00-12:00, 13:00-17:00; Sat-Sun off.

## Resources

| Resource | Group |
| --- | --- |
| Non affecté |  |
| Nicolas Durand | Chef de projet MOE |
| Lionel Kieffer | Lead développement IBM i |
| Léo Charrier | Développeur |
| Équipe développement | Léo Charrier · Léo Gualano · Adrien Quillère (lead : Lionel Kieffer) |
| Frédéric Dantz | Analyse fonctionnelle |
| Thomas Pruvost | Infrastructure / AIME |
| Équipe métiers | Métiers / recette |
| Client | Validation / recette |

## Schedule

| ID | WBS | Task | Type | Duration | Start | Finish | Complete | Resources |
| --- | --- | --- | --- | --- | --- | --- | --- | --- |
| 1 | 1 | **Belmet · ERP 2026** |  | 466d | 2026-06-01 | 2027-09-10 |  |  |
| 2 | 1.1 | **PHASE 0 · Réalisé** |  | 27d | 2026-06-01 | 2026-06-28 | 100% |  |
| 3 | 1.1.1 | Recette en bac à sable (avant migration) · Léo Charrier | manual | 27d | 2026-06-01 | 2026-06-28 | 100% | Léo Charrier |
| 4 | 1.1.2 | Migration V6R1 → V7R5 en production · Lionel · 22/11/2025 | manual | 27d | 2026-06-01 | 2026-06-28 | 100% | Lionel Kieffer |
| 5 | 1.1.3 | Travaux post-migration · jusqu'à déc. 2025 | manual | 27d | 2026-06-01 | 2026-06-28 | 100% | Lionel Kieffer |
| 6 | 1.1.4 | Cahier des charges v1 · reçu | manual | 27d | 2026-06-01 | 2026-06-28 | 100% | Client |
| 7 | 1.1.5 | MVP de la solution cible · N. Durand · validé par le DSI | manual | 27d | 2026-06-01 | 2026-06-28 | 100% | Nicolas Durand |
| 8 | 1.2 | **PHASE 1 · Cadrage & conception** |  | 147d | 2026-07-01 | 2026-11-25 |  |  |
| 9 | 1.2.1 | Cahier des charges définitif | manual | 43d | 2026-07-01 | 2026-08-13 |  | Client; Équipe métiers |
| 10 | 1.2.2 | Structuration de l'équipe de développement · N. Durand | manual | 50d | 2026-07-01 | 2026-08-20 |  | Nicolas Durand |
| 11 | 1.2.3 | Diagramme de flux informatiques / métiers | manual | 52d | 2026-07-17 | 2026-09-07 |  | Frédéric Dantz; Équipe métiers |
| 12 | 1.2.4 | Mise en place des espaces de travail de l’équipe · Thomas Pruvost | manual | 58d | 2026-07-17 | 2026-09-13 |  | Thomas Pruvost |
| 13 | 1.2.5 | CC définitif (bloquant) | milestone, manual | 0d | 2026-08-13 | 2026-08-13 |  |  |
| 14 | 1.2.6 | Description globale des process | manual | 55d | 2026-08-26 | 2026-10-20 |  | Frédéric Dantz; Équipe métiers |
| 15 | 1.2.7 | Construction du modèle de données | manual | 49d | 2026-10-07 | 2026-11-25 |  | Équipe développement |
| 16 | 1.3 | **PHASE 2 · Maquette & validation client** |  | 83d | 2026-10-26 | 2027-01-17 |  |  |
| 17 | 1.3.1 | Back · API domaines prioritaires (référentiels, achat, vente) | manual | 48d | 2026-10-26 | 2026-12-13 |  | Équipe développement |
| 18 | 1.3.2 | Front · petites maquettes par domaine | manual | 52d | 2026-11-07 | 2026-12-29 |  | Équipe développement |
| 19 | 1.3.3 | Maquettes · fin décembre | milestone, manual | 0d | 2026-12-29 | 2026-12-29 |  |  |
| 20 | 1.3.4 | Validation client des maquettes · alignement | manual | 19d | 2026-12-29 | 2027-01-17 |  | Client |
| 21 | 1.3.5 | Validation client · janvier | milestone, manual | 0d | 2027-01-13 | 2027-01-13 |  |  |
| 22 | 1.4 | **PHASE 3 · Développement & recette (par lots)** |  | 177d | 2027-01-17 | 2027-07-13 |  |  |
| 23 | 1.4.1 | Lot 1 · Socle & référentiels · développement | manual | 59d | 2027-01-17 | 2027-03-17 |  | Équipe développement |
| 24 | 1.4.2 | Lot 1 · Socle · recette + correctifs | manual | 27d | 2027-03-17 | 2027-04-13 |  | Équipe développement; Équipe métiers |
| 25 | 1.4.3 | Lot 2 · Achats & stock · développement | manual | 61d | 2027-03-20 | 2027-05-20 |  | Équipe développement |
| 26 | 1.4.4 | Lot 3 · Vente & commerce · développement | manual | 61d | 2027-03-20 | 2027-05-20 |  | Équipe développement |
| 27 | 1.4.5 | Lot 4 · Qualité · développement | manual | 33d | 2027-05-17 | 2027-06-19 |  | Équipe développement |
| 28 | 1.4.6 | Lot 5 · Interfaces · développement | manual | 33d | 2027-05-17 | 2027-06-19 |  | Équipe développement |
| 29 | 1.4.7 | Lot 2 · Achats & stock · recette + correctifs | manual | 27d | 2027-05-20 | 2027-06-16 |  | Équipe développement; Équipe métiers |
| 30 | 1.4.8 | Lot 3 · Vente & commerce · recette + correctifs | manual | 27d | 2027-05-20 | 2027-06-16 |  | Équipe développement; Équipe métiers |
| 31 | 1.4.9 | Lot 4 · Qualité · recette + correctifs | manual | 24d | 2027-06-19 | 2027-07-13 |  | Équipe développement; Équipe métiers |
| 32 | 1.4.10 | Lot 5 · Interfaces · recette + correctifs | manual | 24d | 2027-06-19 | 2027-07-13 |  | Équipe développement; Équipe métiers |

| ID | WBS | Task | Type | Duration | Start | Finish | Resources |
| --- | --- | --- | --- | --- | --- | --- | --- |
| 33 | 1.5 | **PHASE 4 · Mise en service** |  | 116d | 2027-05-17 | 2027-09-10 |  |
| 34 | 1.5.1 | Objectif direction · mi-mai 2027 (cible) | milestone, manual | 0d | 2027-05-17 | 2027-05-17 |  |
| 35 | 1.5.2 | Reprise des données métier · équipe + client | manual | 36d | 2027-06-01 | 2027-07-07 | Équipe métiers; Client |
| 36 | 1.5.3 | Formation & conduite du changement · métiers | manual | 34d | 2027-06-25 | 2027-07-29 | Équipe métiers |
| 37 | 1.5.4 | Test de charge · 100 utilisateurs, 5h-20h, page < 2 s | manual | 34d | 2027-07-07 | 2027-08-10 | Équipe développement |
| 38 | 1.5.5 | Correctifs & stabilisation avant bascule | manual | 31d | 2027-07-13 | 2027-08-13 | Équipe développement |
| 39 | 1.5.6 | Tests de sécurité · SSO AD/Entra, RBAC, RGPD, journalisation | manual | 21d | 2027-07-23 | 2027-08-13 | Équipe développement |
| 40 | 1.5.7 | Charge & sécurité validées (bloquant) | milestone, manual | 0d | 2027-08-13 | 2027-08-13 |  |
| 41 | 1.5.8 | Mise en production (go-live) · équipe + client | manual | 21d | 2027-08-20 | 2027-09-10 | Équipe développement; Client |
| 42 | 1.5.9 | Mise en service · été 2027 | milestone, manual | 0d | 2027-09-01 | 2027-09-01 |  |
